Schedule from MS Project, 2018-09-03 to 2018-12-21, costs in R$, A marks actual dates.

## Calendars

- Padrão: Mon-Fri 09:00-12:00, 13:00-18:00; Sat-Sun off.

## Resources

| Resource | Rate |
| --- | --- |
| Kevin | 150 |
| Rodrigo | 150 |
| Cliente |  |
| Gp Externo | 200 |
| Mm |  |
| Adler | 300 |
| Lucas | 150 |
| Thiago | 150 |

## Schedule

| ID | WBS | Task | Type | Duration | Start | Finish | Predecessors | Complete | Remaining | Actual finish | Baseline start | Baseline finish | Baseline duration | Constraint | Resources | Work | Actual work | Cost | Baseline cost | Actual cost |
| --- | --- | --- | --- | --- | --- | --- | --- | --- | --- | --- | --- | --- | --- | --- | --- | --- | --- | --- | --- | --- |
| 1 | 1 | **Sistema de Integração de Serviços** |  | 79.53d | 2018-09-03 09:00 A | 2018-12-21 14:16 |  | 24% | 60.19d |  | 2018-09-03 09:00 | 2018-12-21 14:16 | 79.53d |  |  | 197.21h | 67.86h | 30,585.06 | 38,860.83 | 10,346.79 |
| 2 | 1.1 | **Prospecção** |  | 3d | 2018-09-03 09:00 A | 2018-09-05 18:00 |  | 100% |  | 2018-09-03 14:00 | 2018-09-03 09:00 | 2018-09-05 18:00 | 3d |  |  | 5h | 5h | 750 | 1,655 | 750 |
| 3 | 1.1.1 | **PTEC** |  | 1.09d | 2018-09-03 09:00 A | 2018-09-04 09:45 |  | 100% |  | 2018-09-03 14:00 | 2018-09-03 09:00 | 2018-09-04 09:45 | 1.09d |  |  | 5h | 5h | 750 | 1,125 | 750 |
| 4 | 1.1.1.1 | Estudar Dominio de Aplicação |  | 0.38d | 2018-09-03 09:00 A | 2018-09-03 12:00 A |  | 100% |  |  | 2018-09-03 09:00 | 2018-09-03 12:00 | 0.38d |  | Kevin | 3h | 3h | 450 | 450 | 450 |
| 5 | 1.1.1.2 | Reunir-se com o fornecedor de requisitos |  | 0.25d | 2018-09-03 09:00 A | 2018-09-03 14:00 A | 4 | 100% |  |  | 2018-09-03 09:00 | 2018-09-03 14:00 | 0.25d |  | Lucas | 2h | 2h | 300 | 300 | 300 |
| 6 | 1.1.1.3 | Redigir PTEC | milestone | 0d | 2018-09-03 09:00 A | 2018-09-03 09:00 A | 5 | 100% |  |  | 2018-09-03 09:00 | 2018-09-03 11:00 | 0.25d |  | Thiago |  |  |  | 300 |  |
| 7 | 1.1.1.4 | Revisar proposta Tecnica | milestone | 0d | 2018-09-03 09:00 A | 2018-09-03 09:00 A | 6 | 100% |  |  | 2018-09-03 09:00 | 2018-09-03 11:15 | 0.28d |  | Rodrigo |  |  |  | 75 |  |
| 8 | 1.1.1.5 | Aprovar PTEC | milestone | 0d | 2018-09-03 09:00 A | 2018-09-03 09:00 A | 7 | 100% |  |  | 2018-09-03 09:00 | 2018-09-03 09:00 | 0d |  | Cliente |  |  |  |  |  |
| 9 | 1.1.2 | **Es. Prel. Tam.** |  | 0.35d | 2018-09-03 09:00 A | 2018-09-03 11:48 |  | 100% |  | 2018-09-03 09:00 | 2018-09-03 09:00 | 2018-09-03 11:48 | 0.35d |  |  |  |  |  | 80 |  |
| 10 | 1.1.2.1 | Estimar tamanho do projeto | milestone | 0d | 2018-09-03 09:00 A | 2018-09-03 09:00 A | 7 | 100% |  |  | 2018-09-03 09:00 | 2018-09-03 10:00 | 0.12d |  | Thiago |  |  |  |  |  |
| 11 | 1.1.2.2 | Revisar estimativa de tamanho do projeto | milestone | 0d | 2018-09-03 09:00 A | 2018-09-03 09:00 A | 10 | 100% |  |  | 2018-09-03 09:00 | 2018-09-03 10:48 | 0.23d |  | Gp Externo |  |  |  | 80 |  |
| 12 | 1.1.3 | **Es. Prel. Cronograma e orçamento.** |  | 1d | 2018-09-03 09:00 A | 2018-09-03 18:00 |  | 100% |  | 2018-09-03 09:00 | 2018-09-03 09:00 | 2018-09-03 18:00 | 1d |  |  |  |  |  | 450 |  |
| 13 | 1.1.3.1 | Elaborar Cronograma e orçamento preliminares | milestone | 0d | 2018-09-03 09:00 A | 2018-09-03 09:00 A | 9 | 100% |  |  | 2018-09-03 09:00 | 2018-09-03 15:18 | 0.31d |  | Kevin |  |  |  | 375 |  |
| 14 | 1.1.3.2 | Revisar Cronograma e orçamento preliminares | milestone | 0d | 2018-09-03 09:00 A | 2018-09-03 09:00 A | 13, 10 | 100% |  |  | 2018-09-03 09:00 | 2018-09-03 09:30 | 0.06d |  | Lucas |  |  |  | 75 |  |
| 15 | 1.2 | **Análise** |  | 3d | 2018-09-04 09:00 A | 2018-09-06 18:00 |  | 100% |  | 2018-09-06 11:30 | 2018-09-04 09:00 | 2018-09-06 18:00 | 3d |  |  | 18.99h | 18.99h | 2,848.46 | 6,150 | 2,848.46 |
| 16 | 1.2.1 | **Documento de requisitos** |  | 2d | 2018-09-04 09:00 A | 2018-09-05 18:00 |  | 100% |  | 2018-09-06 10:00 | 2018-09-04 09:00 | 2018-09-05 18:00 | 2d |  |  | 13h | 13h | 1,949.55 | 3,900 | 1,949.55 |
| 17 | 1.2.1.1 | Reunir-se com o cliente |  | 0.17d | 2018-09-04 09:00 A | 2018-09-06 08:36 A | 14 | 100% |  |  | 2018-09-04 09:00 | 2018-09-06 10:12 | 0.38d |  | Rodrigo; Kevin; Lucas; Thiago | 3h | 3h | 450 | 900 | 450 |
| 18 | 1.2.1.2 | Elaborar DRE |  | 0.5d | 2018-09-04 09:00 A | 2018-09-06 10:00 A | 17 | 100% |  |  | 2018-09-04 09:00 | 2018-09-06 13:36 | 0.82d |  | Lucas; Kevin; Rodrigo; Thiago | 8h | 8h | 1,200 | 2,100 | 1,200 |
| 19 | 1.2.1.3 | Revisar DRE |  | 0.12d | 2018-09-04 09:00 A | 2018-09-04 09:59 A | 18 | 100% |  |  | 2018-09-04 09:00 | 2018-09-06 14:48 | 0.46d |  | Rodrigo; Kevin; Lucas; Thiago | 2h | 2h | 299.55 | 900 | 299.55 |
| 20 | 1.2.1.4 | Submeter DRE para aprovação do cliente | milestone | 0d | 2018-09-04 09:00 A | 2018-09-04 09:00 A | 19 | 100% |  |  | 2018-09-04 09:00 | 2018-09-04 09:00 | 0d |  | Kevin; Lucas; Thiago; Rodrigo |  |  |  |  |  |
| 21 | 1.2.2 | **Matriz de rastreabilidade Bidirecional** |  | 2d | 2018-09-05 09:00 A | 2018-09-06 18:00 |  | 100% |  | 2018-09-06 11:30 | 2018-09-05 09:00 | 2018-09-06 18:00 | 2d |  |  | 5.99h | 5.99h | 898.92 | 2,250 | 898.92 |
| 22 | 1.2.2.1 | Elaborar MRB |  | 0.29d | 2018-09-05 09:00 A | 2018-09-06 09:49 A | 20 | 100% |  |  | 2018-09-05 09:00 | 2018-09-06 13:30 | 0.62d | finish no earlier than 2018-09-05 18:00 | Kevin; Lucas; Rodrigo; Thiago | 5h | 5h | 749.29 | 1,800 | 749.29 |
| 23 | 1.2.2.2 | Revisar MRB |  | 0.04d | 2018-09-06 11:10 A | 2018-09-06 11:30 A | 22 | 100% |  |  | 2018-09-06 11:10 | 2018-09-06 14:26 | 0.18d | finish no earlier than 2018-09-05 18:00 | Rodrigo; Kevin; Lucas; Thiago | 1h | 1h | 149.63 | 450 | 149.63 |
| 24 | 1.3 | **Projeto** |  | 3.25d? | 2018-09-06 11:37 A | 2018-09-11 14:38 A |  | 100% |  |  | 2018-09-06 11:37 | 2018-09-11 14:38 | 3.25d? |  |  | 8.33h | 8.33h | 1,418.19 | 1,838.19 | 1,418.19 |
| 25 | 1.3.1 | **Diagrama de Classes** |  | 0.25d? | 2018-09-06 11:37 A | 2018-09-06 14:38 A |  | 100% |  |  | 2018-09-06 11:37 | 2018-09-06 14:38 | 0.25d? |  |  | 3.83h | 3.83h | 698.25 | 698.25 | 698.25 |
| 26 | 1.3.1.1 | Elaborar Diagrama de Classes |  | 0.05d? | 2018-09-06 11:37 A | 2018-09-06 13:02 A | 23 | 100% |  |  | 2018-09-06 11:37 | 2018-09-06 13:02 | 0.05d? |  | Lucas; Adler; Kevin; Rodrigo; Thiago | 2h | 2h | 360.75 | 360.75 | 360.75 |
| 27 | 1.3.1.2 | Revisar Diagrama de Classes |  | 0.03d? | 2018-09-06 14:13 A | 2018-09-06 14:28 A | 26 | 100% |  |  | 2018-09-06 14:13 | 2018-09-06 14:28 | 0.03d? |  | Kevin; Thiago; Lucas; Adler; Rodrigo | 1h | 1h | 187.5 | 187.5 | 187.5 |
| 28 | 1.3.1.3 | Atualizar MRB |  | 0.02d? | 2018-09-06 14:28 A | 2018-09-06 14:38 A | 27 | 100% |  |  | 2018-09-06 14:28 | 2018-09-06 14:38 | 0.02d? |  | Lucas; Rodrigo; Adler; Kevin; Thiago | 0.83h | 0.83h | 150 | 150 | 150 |

| ID | WBS | Task | Type | Duration | Start | Finish | Predecessors | Complete | Remaining | Actual start | Actual finish | Baseline start | Baseline finish | Baseline duration | Total slack | Constraint | Resources | Work | Actual work | Cost | Baseline cost | Actual cost |
| --- | --- | --- | --- | --- | --- | --- | --- | --- | --- | --- | --- | --- | --- | --- | --- | --- | --- | --- | --- | --- | --- | --- |
| 29 | 1.3.2 | **Modelo Entidade Relacionamento** |  | 0.14d? | 2018-09-06 14:38 A | 2018-09-06 15:44 A |  | 100% |  |  |  | 2018-09-06 14:38 | 2018-09-06 15:51 | 0.15d? |  |  |  | 1.5h | 1.5h | 270 | 690 | 270 |
| 30 | 1.3.2.1 | Elaborar MER |  | 0.03d? | 2018-09-06 14:38 A | 2018-09-06 14:50 A | 28 | 100% |  |  |  | 2018-09-06 14:38 | 2018-09-06 15:14 | 0.07d? |  |  | Rodrigo; Lucas; Adler; Kevin; Thiago | 1h | 1h | 180 | 540 | 180 |
| 31 | 1.3.2.2 | Revisar MER |  | 0.01d? | 2018-09-06 15:38 A | 2018-09-06 15:44 A | 30 | 100% |  |  |  | 2018-09-06 15:38 | 2018-09-06 15:51 | 0.02d? |  |  | Lucas; Rodrigo; Adler; Kevin; Thiago | 0.5h | 0.5h | 90 | 150 | 90 |
| 32 | 1.3.3 | Elaborar Plano de Teste | manual | 1.42d | 2018-09-06 14:38 A | 2018-09-10 09:00 A | 28 | 100% |  |  |  | 2018-09-06 14:38 | 2018-09-10 09:00 | 1.42d |  |  | Kevin; Lucas; Rodrigo; Thiago | 1h | 1h | 150 | 150 | 150 |
| 33 | 1.3.4 | Revisar Plano de Teste | manual | 0.47d | 2018-09-07 14:38 A | 2018-09-10 09:23 A | 32 | 100% |  |  |  | 2018-09-07 14:38 | 2018-09-10 09:23 | 0.47d |  |  | Kevin; Lucas; Rodrigo; Thiago | 1h | 1h | 149.94 | 149.94 | 149.94 |
| 34 | 1.3.5 | Gerar Status Report | manual | 1d | 2018-09-10 14:38 A | 2018-09-11 14:38 A | 33 | 100% |  |  |  | 2018-09-10 14:38 | 2018-09-11 14:38 | 1d |  |  | Kevin; Lucas; Rodrigo; Thiago | 1h | 1h | 150 | 150 | 150 |
| 35 | 1.4 | **Planejamento** |  | 2d | 2018-09-06 09:00 A | 2018-09-07 18:00 |  | 100% |  |  | 2018-09-06 10:40 | 2018-09-06 09:00 | 2018-09-07 18:00 | 2d |  |  |  | 11.17h | 11.17h | 1,675 | 2,325 | 1,675 |
| 36 | 1.4.1 | **Estimativa de Tamanho Definitivo** |  | 1d | 2018-09-06 09:00 A | 2018-09-06 18:00 |  | 100% |  |  | 2018-09-06 10:20 | 2018-09-06 09:00 | 2018-09-06 18:00 | 1d |  |  |  | 3h | 3h | 450 | 650 | 450 |
| 37 | 1.4.1.1 | Elaborar Estimativa de Tamanho Definitiva |  | 0.08d? | 2018-09-06 09:00 A | 2018-09-06 09:40 A | 31 | 100% |  |  |  | 2018-09-06 09:00 | 2018-09-06 16:23 | 0.17d? |  |  | Kevin; Lucas; Rodrigo | 2h | 2h | 300 | 600 | 300 |
| 38 | 1.4.1.2 | Revisar Estimativa de Tamanho Definitiva |  | 0.12d? | 2018-09-06 09:00 A | 2018-09-06 10:20 A | 37 | 100% |  |  |  | 2018-09-06 09:00 | 2018-09-06 09:20 | 0.04d? |  |  | Lucas | 1h | 1h | 150 | 50 | 150 |
| 39 | 1.4.2 | **Cronograma Definitivo** |  | 0.4d? | 2018-09-06 09:00 A | 2018-09-06 13:12 |  | 100% |  |  | 2018-09-06 10:40 | 2018-09-06 09:00 | 2018-09-06 13:12 | 0.4d? |  |  |  | 7h | 7h | 1,050 | 1,350 | 1,050 |
| 40 | 1.4.2.1 | Elabora Cronograma Definitivo |  | 0.21d? | 2018-09-06 09:00 A | 2018-09-06 10:40 A | 38 | 100% |  |  |  | 2018-09-06 09:00 | 2018-09-06 11:20 | 0.29d? |  |  | Kevin; Lucas; Rodrigo | 5h | 5h | 750 | 1,050 | 750 |
| 41 | 1.4.2.2 | Revisar Cronograma Definitivo |  | 0.12d? | 2018-09-06 09:00 A | 2018-09-06 10:00 A | 40 | 100% |  |  |  | 2018-09-06 09:00 | 2018-09-06 10:00 | 0.12d? |  |  | Kevin; Rodrigo | 2h | 2h | 300 | 300 | 300 |
| 42 | 1.4.3 | **Estimativa de Custo Definitiva** |  | 0.12d | 2018-09-06 09:00 A | 2018-09-06 10:00 |  | 100% |  |  | 2018-09-06 09:20 | 2018-09-06 09:00 | 2018-09-06 10:00 | 0.12d |  |  |  | 1.17h | 1.17h | 175 | 325 | 175 |
| 43 | 1.4.3.1 | Elaborar Estimativa de Custo Definitiva |  | 0.04d? | 2018-09-06 09:00 A | 2018-09-06 09:20 A | 41 | 100% |  |  |  | 2018-09-06 09:00 | 2018-09-06 10:16 | 0.08d? |  |  | Kevin; Lucas; Rodrigo | 1h | 1h | 150 | 300 | 150 |
| 44 | 1.4.3.2 | Revisar Estimativa de Custo Definitiva |  | 0.02d? | 2018-09-06 09:00 A | 2018-09-06 09:10 A | 43 | 100% |  |  |  | 2018-09-06 09:00 | 2018-09-06 09:10 | 0.02d? |  |  | Lucas; Thiago | 0.17h | 0.17h | 25 | 25 | 25 |
| 45 | 1.4.3.3 | Submeter Estimativa de Custo e Tamanho para aprovação do cliente | milestone | 0d? | 2018-09-06 09:00 A | 2018-09-06 09:00 A | 44 | 100% |  |  |  | 2018-09-06 09:00 | 2018-09-06 09:00 | 0d? |  |  | Kevin; Thiago |  |  |  |  |  |
| 46 | 1.5 | **Implementação** |  | 73.98d? | 2018-09-07 09:00 A | 2018-12-19 17:51 |  | 15% | 63.1d? |  |  | 2018-09-07 09:00 | 2018-12-19 17:51 | 73.98d? | 0d |  |  | 122.25h | 24.37h | 18,337.41 | 21,336.65 | 3,655.14 |
| 47 | 1.5.1 | **Release 01** |  | 45.85d | 2018-09-07 09:00 | 2018-11-09 16:45 A |  | 100% |  | 2018-11-05 09:00 |  | 2018-09-07 09:00 | 2018-11-09 16:45 | 45.85d |  |  |  | 20h | 20h | 2,999.76 | 5,549 | 2,999.76 |
| 48 | 1.5.1.1 | **Implementação** |  | 41.24d | 2018-09-07 09:00 | 2018-11-05 10:53 |  | 100% |  | 2018-11-05 09:00 | 2018-11-05 15:30 | 2018-09-07 09:00 | 2018-11-05 10:53 | 41.24d |  |  |  | 11h | 11h | 1,649.76 | 4,049 | 1,649.76 |
| 49 | 1.5.1.1.1 | **[RFC07] Manter Login** |  | 0.17d? | 2018-11-05 09:00 A | 2018-11-05 10:23 A |  | 100% |  |  |  | 2018-11-05 09:00 | 2018-11-05 10:53 | 0.24d? |  |  |  | 5h | 5h | 749.76 | 1,500 | 749.76 |
| 50 | 1.5.1.1.1.1 | [RFS023] Cadastrar Login | manual | 0.01d | 2018-11-05 09:00 A | 2018-11-05 09:06 A | 45 | 100% |  |  |  | 2018-11-05 09:00 | 2018-11-05 09:12 | 0.03d |  |  | Kevin; Lucas; Rodrigo; Thiago | 2h | 2h | 300 | 600 | 300 |
| 51 | 1.5.1.1.1.2 | [RFS024] Consultar Login | manual | 0.01d | 2018-11-05 09:00 A | 2018-11-05 09:06 A | 50 | 100% |  |  |  | 2018-11-05 09:00 | 2018-11-05 09:12 | 0.03d |  |  | Kevin; Lucas; Rodrigo; Thiago | 1h | 1h | 150 | 300 | 150 |
| 52 | 1.5.1.1.1.3 | [RFS025] Alterar Login |  | 0.04d? | 2018-11-05 09:12 A | 2018-11-05 09:32 A | 51 | 100% |  |  |  | 2018-11-05 09:12 | 2018-11-05 09:54 | 0.09d? |  | start no earlier than 2018-11-05 09:00 | Kevin; Lucas; Rodrigo; Thiago | 1h | 1h | 149.76 | 300 | 149.76 |
| 53 | 1.5.1.1.1.4 | [RFS026] Cancelar Login |  | 0.06d? | 2018-11-05 09:53 A | 2018-11-05 10:23 A | 52 | 100% |  |  |  | 2018-11-05 09:53 | 2018-11-05 10:53 | 0.12d? |  | start no earlier than 2018-11-05 09:00 | Kevin; Lucas; Rodrigo; Thiago | 1h | 1h | 150 | 300 | 150 |

| ID | WBS | Task | Type | Duration | Start | Finish | Predecessors | Complete | Remaining | Baseline start | Baseline finish | Baseline duration | Total slack | Free slack | Resources | Work | Actual work | Cost | Baseline cost | Actual cost |
| --- | --- | --- | --- | --- | --- | --- | --- | --- | --- | --- | --- | --- | --- | --- | --- | --- | --- | --- | --- | --- |
| 54 | 1.5.1.1.2 | **[RFC08] Manter perfil de Administrador** |  | 0.45d | 2018-11-05 10:53 A | 2018-11-05 15:30 A |  | 100% |  | 2018-11-05 10:53 | 2018-11-05 16:16 | 0.55d |  |  |  | 6h | 6h | 900 | 2,549 | 900 |
| 55 | 1.5.1.1.2.1 | [RFS27] Cadastro de perfil Administrador | manual | 0.09d | 2018-11-05 10:53 A | 2018-11-05 11:38 A | 53 | 100% |  | 2018-11-05 10:53 | 2018-11-05 13:11 | 0.16d |  |  | Kevin; Lucas; Rodrigo; Thiago | 3h | 3h | 450 | 749.75 | 450 |
| 56 | 1.5.1.1.2.2 | [RFS28] Alterar dados de perfil Administrador | manual | 0.03d | 2018-11-05 13:11 A | 2018-11-05 13:26 A | 55 | 100% |  | 2018-11-05 13:11 | 2018-11-05 14:13 | 0.13d |  |  | Kevin; Lucas; Rodrigo; Thiago | 1h | 1h | 150 | 599.75 | 150 |
| 57 | 1.5.1.1.2.3 | [RFS29] Pesquisar Administradores | manual | 0.03d | 2018-11-05 14:13 A | 2018-11-05 14:28 A | 56 | 100% |  | 2018-11-05 14:13 | 2018-11-05 15:15 | 0.13d |  |  | Kevin; Lucas; Rodrigo; Thiago | 1h | 1h | 150 | 599.75 | 150 |
| 58 | 1.5.1.1.2.4 | [RFS30] Desativar Administradores | manual | 0.03d | 2018-11-05 15:15 A | 2018-11-05 15:30 A | 57 | 100% |  | 2018-11-05 15:15 | 2018-11-05 16:16 | 0.13d |  |  | Kevin; Lucas; Rodrigo; Thiago | 1h | 1h | 150 | 599.75 | 150 |
| 59 | 1.5.1.2 | **Teste Release 01** |  | 3.61d | 2018-11-05 10:53 A | 2018-11-08 16:45 A |  | 100% |  | 2018-11-05 10:53 | 2018-11-08 16:45 | 3.61d |  |  |  | 8h | 8h | 1,200 | 1,350 | 1,200 |
| 60 | 1.5.1.2.1 | **[RFC07] Manter Login** |  | 2d | 2018-11-05 10:53 A | 2018-11-07 10:55 A |  | 100% |  | 2018-11-05 10:53 | 2018-11-07 10:55 | 2d |  |  |  | 4h | 4h | 600 | 600 | 600 |
| 61 | 1.5.1.2.1.1 | [RFS023] Cadastrar Login | manual | 0.06d | 2018-11-05 10:53 A | 2018-11-05 11:22 A | 53 | 100% |  | 2018-11-05 10:53 | 2018-11-05 11:22 | 0.06d |  |  | Kevin; Lucas; Rodrigo; Thiago | 1h | 1h | 150 | 150 | 150 |
| 62 | 1.5.1.2.1.2 | [RFS024] Consultar Login | manual | 0.06d | 2018-11-07 09:28 A | 2018-11-07 09:57 A | 61 | 100% |  | 2018-11-07 09:28 | 2018-11-07 09:57 | 0.06d |  |  | Kevin; Lucas; Rodrigo; Thiago | 1h | 1h | 150 | 150 | 150 |
| 63 | 1.5.1.2.1.3 | [RFS025] Alterar Login | manual | 0.06d | 2018-11-07 09:57 A | 2018-11-07 10:26 A | 62 | 100% |  | 2018-11-07 09:57 | 2018-11-07 10:26 | 0.06d |  |  | Kevin; Lucas; Rodrigo; Thiago | 1h | 1h | 150 | 150 | 150 |
| 64 | 1.5.1.2.1.4 | [RFS026] Cancelar Login | manual | 0.06d | 2018-11-07 10:26 A | 2018-11-07 10:55 A | 63 | 100% |  | 2018-11-07 10:26 | 2018-11-07 10:55 | 0.06d |  |  | Kevin; Lucas; Rodrigo; Thiago | 1h | 1h | 150 | 150 | 150 |
| 65 | 1.5.1.2.2 | **[RFC08] Manter perfil de Administrador** |  | 3.06d | 2018-11-05 16:16 A | 2018-11-08 16:45 A |  | 100% |  | 2018-11-05 16:16 | 2018-11-08 16:45 | 3.06d |  |  |  | 4h | 4h | 600 | 750 | 600 |
| 66 | 1.5.1.2.2.1 | [RFS27] Cadastro de perfil Administrador | manual | 0.47d | 2018-11-05 16:16 A | 2018-11-06 11:01 A | 58 | 100% |  | 2018-11-05 16:16 | 2018-11-06 16:16 | 1d |  |  | Kevin; Lucas; Rodrigo; Thiago | 1h | 1h | 150 | 300 | 150 |
| 67 | 1.5.1.2.2.2 | [RFS28] Alterar dados de perfil Administrador | manual | 1d | 2018-11-06 16:16 A | 2018-11-07 16:16 A | 66 | 100% |  | 2018-11-06 16:16 | 2018-11-07 16:16 | 1d |  |  | Kevin; Lucas; Rodrigo; Thiago | 1h | 1h | 150 | 150 | 150 |
| 68 | 1.5.1.2.2.3 | [RFS29] Pesquisar Administradores | manual | 1d | 2018-11-07 16:16 A | 2018-11-08 16:16 A | 67 | 100% |  | 2018-11-07 16:16 | 2018-11-08 16:16 | 1d |  |  | Kevin; Lucas; Rodrigo; Thiago | 1h | 1h | 150 | 150 | 150 |
| 69 | 1.5.1.2.2.4 | [RFS30] Desativar Administradores |  | 0.06d | 2018-11-08 16:16 A | 2018-11-08 16:45 A | 68 | 100% |  | 2018-11-08 16:16 | 2018-11-08 16:45 | 0.06d |  |  | Kevin; Lucas; Rodrigo; Thiago | 1h | 1h | 150 | 150 | 150 |
| 70 | 1.5.1.3 | Gerar Status Report | manual | 1d | 2018-11-08 16:45 A | 2018-11-09 16:45 A | 69 | 100% |  | 2018-11-08 16:45 | 2018-11-09 16:45 | 1d |  |  | Kevin; Lucas; Rodrigo; Thiago | 1h | 1h | 150 | 150 | 150 |
| 71 | 1.5.2 | **Release 02** |  | 47.91d? | 2018-09-11 09:00 A | 2018-11-15 17:15 |  | 10% | 43.13d? | 2018-09-11 09:00 | 2018-11-15 18:00 | 48d? | 0d |  |  | 31.23h | 4.37h | 4,685.09 | 4,985.09 | 655.38 |
| 72 | 1.5.2.1 | **Implementação** |  | 4.63d | 2018-11-07 10:55 A | 2018-11-13 17:00 |  | 2% | 4.53d | 2018-11-07 10:55 | 2018-11-13 17:00 | 4.63d | 0d |  |  | 20h | 3.31h | 3,000.5 | 3,300.5 | 496 |
| 73 | 1.5.2.1.1 | **[RFC01] Manter Perfil de Cliente e Profissional** |  | 0.35d | 2018-11-07 10:55 A | 2018-11-07 14:44 |  | 29% | 0.25d | 2018-11-07 10:55 | 2018-11-07 14:44 | 0.35d | 0.5d |  |  | 10h | 3.31h | 1,500.5 | 1,500.5 | 496 |
| 74 | 1.5.2.1.1.1 | [RFS01] Cadastrar Usuário | manual | 0.1d? | 2018-11-07 10:55 A | 2018-11-07 11:41 | 64 | 80% | 0.02d? | 2018-11-07 10:55 | 2018-11-07 11:41 | 0.1d? |  |  | Kevin; Lucas; Rodrigo; Thiago | 3h | 2.48h | 450.25 | 450.25 | 372 |
| 75 | 1.5.2.1.1.2 | [RFS02] Alterar Dados do Perfil de Cliente | manual | 0.03d? | 2018-11-07 11:41 A | 2018-11-07 11:57 | 74 | 80% | 0.01d? | 2018-11-07 11:41 | 2018-11-07 11:57 | 0.03d? |  |  | Kevin; Lucas; Rodrigo; Thiago | 1h | 0.83h | 150 | 150 | 124 |
| 76 | 1.5.2.1.1.3 | [RFS03] Requisição de perfil profissional | manual | 0.1d? | 2018-11-07 11:57 | 2018-11-07 13:43 | 75 |  |  | 2018-11-07 11:57 | 2018-11-07 13:43 | 0.1d? |  |  | Kevin; Lucas; Rodrigo; Thiago | 2h |  | 300 | 300 |  |
| 77 | 1.5.2.1.1.4 | [RFS04] Lista de requisições para perfil profissional | manual | 0.06d? | 2018-11-07 13:43 | 2018-11-07 14:14 | 76 |  |  | 2018-11-07 13:43 | 2018-11-07 14:14 | 0.06d? |  |  | Kevin; Lucas; Rodrigo; Thiago | 2h |  | 300.25 | 300.25 |  |
| 78 | 1.5.2.1.1.5 | [RFS05] Análise de requisição de perfil profissional |  | 0.06d | 2018-11-07 14:14 | 2018-11-07 14:44 | 77 |  |  | 2018-11-07 14:14 | 2018-11-07 14:44 | 0.06d | 0.5d | 0d | Lucas; Rodrigo; Thiago; Kevin | 2h |  | 300 | 300 |  |

| ID | WBS | Task | Type | Duration | Start | Finish | Predecessors | Complete | Remaining | Actual start | Baseline start | Baseline finish | Baseline duration | Total slack | Free slack | Resources | Work | Actual work | Cost | Baseline cost | Actual cost |
| --- | --- | --- | --- | --- | --- | --- | --- | --- | --- | --- | --- | --- | --- | --- | --- | --- | --- | --- | --- | --- | --- |
| 79 | 1.5.2.1.2 | **[RFC03] Manter Serviço** |  | 3.03d | 2018-11-08 16:45 | 2018-11-13 17:00 |  |  |  |  | 2018-11-08 16:45 | 2018-11-13 17:00 | 3.03d | 0d |  |  | 10h |  | 1,500 | 1,800 |  |
| 80 | 1.5.2.1.2.1 | [RFS10] Solicitar Serviço | manual | 1d? | 2018-11-08 16:45 | 2018-11-09 16:45 | 78 |  |  |  | 2018-11-08 16:45 | 2018-11-09 16:45 | 1d? |  |  | Kevin; Lucas; Rodrigo; Thiago | 5h |  | 750 | 1,050 |  |
| 81 | 1.5.2.1.2.2 | [RFS11] Alterar Serviço | manual | 1d? | 2018-11-09 08:00 | 2018-11-09 17:00 | 80 |  |  |  | 2018-11-09 08:00 | 2018-11-09 17:00 | 1d? |  |  | Kevin; Lucas; Rodrigo; Thiago | 2h |  | 300 | 300 |  |
| 82 | 1.5.2.1.2.3 | [RFS12] Pesquisar Serviço | manual | 1d? | 2018-11-09 17:00 | 2018-11-12 17:00 | 81 |  |  |  | 2018-11-09 17:00 | 2018-11-12 17:00 | 1d? |  |  | Kevin; Lucas; Rodrigo; Thiago | 1h |  | 150 | 150 |  |
| 83 | 1.5.2.1.2.4 | [RFS13] Cancelar Serviço | manual | 1d? | 2018-11-12 17:00 | 2018-11-13 17:00 | 82 |  |  |  | 2018-11-12 17:00 | 2018-11-13 17:00 | 1d? |  |  | Kevin; Lucas; Rodrigo; Thiago | 2h |  | 300 | 300 |  |
| 84 | 1.5.2.2 | **Teste Release 02** |  | 2d | 2018-09-11 09:00 | 2018-09-12 18:00 |  | 15% | 1.7d | 2018-11-07 14:44 | 2018-09-11 09:00 | 2018-09-12 18:00 | 2d |  |  |  | 10.23h | 1.06h | 1,534.59 | 1,534.59 | 159.38 |
| 85 | 1.5.2.2.1 | **[RFC01] Manter Pefil de Cliente e Profissional** |  | 5d? | 2018-11-07 14:44 A | 2018-11-14 14:44 |  | 20% | 4d? |  | 2018-11-07 14:44 | 2018-11-14 14:44 | 5d? | 0d |  |  | 5h | 1.06h | 750 | 750 | 159.38 |
| 86 | 1.5.2.2.1.1 | [RFS01] Cadastrar Usuário | manual | 1d? | 2018-11-07 14:44 A | 2018-11-08 14:44 | 78 | 50% | 0.5d? |  | 2018-11-07 14:44 | 2018-11-08 14:44 | 1d? |  |  | Kevin; Lucas; Rodrigo; Thiago | 1h | 0.53h | 150 | 150 | 79.69 |
| 87 | 1.5.2.2.1.2 | [RFS02] Alterar Dados do Perfil de Cliente | manual | 1d? | 2018-11-08 14:44 A | 2018-11-09 14:44 | 86 | 50% | 0.5d? |  | 2018-11-08 14:44 | 2018-11-09 14:44 | 1d? |  |  | Kevin; Lucas; Rodrigo; Thiago | 1h | 0.53h | 150 | 150 | 79.69 |
| 88 | 1.5.2.2.1.3 | [RFS03] Requisição de perfil profissional | manual | 1d? | 2018-11-09 14:44 | 2018-11-12 14:44 | 87 |  |  |  | 2018-11-09 14:44 | 2018-11-12 14:44 | 1d? |  |  | Kevin; Lucas; Rodrigo; Thiago | 1h |  | 150 | 150 |  |
| 89 | 1.5.2.2.1.4 | [RFS04] Lista de requisições para perfil profissional | manual | 1d? | 2018-11-12 14:44 | 2018-11-13 14:44 | 88 |  |  |  | 2018-11-12 14:44 | 2018-11-13 14:44 | 1d? |  |  | Kevin; Lucas; Rodrigo; Thiago | 1h |  | 150 | 150 |  |
| 90 | 1.5.2.2.1.5 | [RFS05] Análise de requisição de perfil profissional | manual | 1d? | 2018-11-13 14:44 | 2018-11-14 14:44 | 89 |  |  |  | 2018-11-13 14:44 | 2018-11-14 14:44 | 1d? |  |  | Kevin; Lucas; Rodrigo; Thiago | 1h |  | 150 | 150 |  |
| 91 | 1.5.2.2.2 | **[RFC03] Manter Serviço** |  | 4.03d? | 2018-11-09 16:45 | 2018-11-15 17:00 |  |  |  |  | 2018-11-09 16:45 | 2018-11-15 17:00 | 4.03d? | 0d |  |  | 5.23h |  | 784.59 | 784.59 |  |
| 92 | 1.5.2.2.2.1 | [RFS10] Solicitar Serviço | manual | 0.5d | 2018-11-09 16:45 | 2018-11-12 11:45 | 80 |  |  |  | 2018-11-09 16:45 | 2018-11-12 11:45 | 0.5d |  |  | Kevin; Lucas; Rodrigo; Thiago | 3h |  | 450 | 450 |  |
| 93 | 1.5.2.2.2.2 | [RFS11] Alterar Serviço | manual | 0.18d | 2018-11-14 16:31 | 2018-11-14 18:00 | 92 |  |  |  | 2018-11-14 16:31 | 2018-11-14 18:00 | 0.18d |  |  | Kevin; Lucas; Rodrigo; Thiago | 0.35h |  | 52.24 | 52.24 |  |
| 94 | 1.5.2.2.2.3 | [RFS12] Pesquisar Serviço | manual | 0.5d | 2018-11-15 08:00 | 2018-11-15 12:00 | 93 |  |  |  | 2018-11-15 08:00 | 2018-11-15 12:00 | 0.5d |  |  | Kevin; Lucas; Rodrigo; Thiago | 0.94h |  | 141.18 | 141.18 |  |
| 95 | 1.5.2.2.2.4 | [RFS13] Cancelar Serviço | manual | 0.5d | 2018-11-15 13:00 | 2018-11-15 17:00 | 94 |  |  |  | 2018-11-15 13:00 | 2018-11-15 17:00 | 0.5d |  |  | Kevin; Lucas; Rodrigo; Thiago | 0.94h |  | 141.18 | 141.18 |  |
| 96 | 1.5.2.3 | Gerar Status Report | manual | 0.03d | 2018-11-15 17:00 | 2018-11-15 17:15 | 95 |  |  |  | 2018-11-15 17:44 | 2018-11-15 18:00 | 0.03d |  |  | Kevin; Lucas; Rodrigo; Thiago | 1h |  | 150 | 150 |  |
| 97 | 1.5.3 | **Release 03** |  | 57.53d | 2018-09-12 09:00 | 2018-11-30 14:16 |  |  |  |  | 2018-09-12 09:00 | 2018-11-30 14:16 | 57.53d |  |  |  | 33h |  | 4,949.75 | 5,099.75 |  |
| 98 | 1.5.3.1 | **Implementação** |  | 3d | 2018-09-12 09:00 | 2018-09-14 18:00 |  |  |  |  | 2018-09-12 09:00 | 2018-09-14 18:00 | 3d |  |  |  | 23h |  | 3,450 | 3,600 |  |
| 99 | 1.5.3.1.1 | **[RFC06] Manter Album** |  | 0.23d? | 2018-09-12 09:00 | 2018-09-12 10:48 |  |  |  |  | 2018-09-12 09:00 | 2018-09-12 10:48 | 0.23d? |  |  |  | 11h |  | 1,650 | 1,800 |  |
| 100 | 1.5.3.1.1.1 | [RFS19] Cadastrar Foto no Album |  | 0.21d? | 2018-09-12 09:00 | 2018-09-12 10:40 |  |  |  |  | 2018-09-12 09:00 | 2018-09-12 11:00 | 0.25d? | 50.89d | 0d | Rodrigo; Lucas; Kevin; Thiago | 5h |  | 750 | 900 |  |
| 101 | 1.5.3.1.1.2 | [RFS20] Alterar Foto no Album |  | 0.08d? | 2018-09-12 10:40 | 2018-09-12 11:20 | 100 |  |  |  | 2018-09-12 11:00 | 2018-09-12 11:40 | 0.08d? | 50.89d | 0d | Kevin; Lucas; Rodrigo; Thiago | 2h |  | 300 | 300 |  |
| 102 | 1.5.3.1.1.3 | [RFS21] Consultar Foto no Album |  | 0.08d? | 2018-09-12 11:20 | 2018-09-12 12:00 | 101 |  |  |  | 2018-09-12 11:40 | 2018-09-12 14:20 | 0.12d? | 50.89d | 0d | Lucas; Kevin; Rodrigo; Thiago | 2h |  | 300 | 300 |  |
| 103 | 1.5.3.1.1.4 | [RFS22] Remover Foto no Album |  | 0.17d? | 2018-09-12 12:00 | 2018-09-12 14:40 | 102 |  |  |  | 2018-09-12 14:20 | 2018-09-12 15:00 | 0.08d? | 50.76d | 47.3d | Lucas; Kevin; Rodrigo; Thiago | 2h |  | 300 | 300 |  |

| ID | WBS | Task | Type | Duration | Start | Finish | Predecessors | Baseline start | Baseline finish | Baseline duration | Total slack | Free slack | Constraint | Resources | Work | Cost | Baseline cost |
| --- | --- | --- | --- | --- | --- | --- | --- | --- | --- | --- | --- | --- | --- | --- | --- | --- | --- |
| 104 | 1.5.3.1.2 | **[RFC02] Manter Serviço Prestados no Calendário** |  | 4d | 2018-11-16 17:04 | 2018-11-22 17:04 |  | 2018-11-16 17:04 | 2018-11-22 17:04 | 4d | 0d |  |  |  | 12h | 1,800 | 1,800 |
| 105 | 1.5.3.1.2.1 | [RFS06] Cadastrar Serviço Prestados no Calendário | manual | 1d? | 2018-11-16 17:04 | 2018-11-19 17:04 | 103 | 2018-11-16 17:04 | 2018-11-19 17:04 | 1d? |  |  |  | Kevin; Lucas; Rodrigo; Thiago | 6h | 900 | 900 |
| 106 | 1.5.3.1.2.2 | [RFS07] Consultar Serviço Prestados no Calendário | manual | 1d? | 2018-11-19 17:04 | 2018-11-20 17:04 | 105 | 2018-11-19 17:04 | 2018-11-20 17:04 | 1d? |  |  |  | Kevin; Lucas; Rodrigo; Thiago | 2h | 300 | 300 |
| 107 | 1.5.3.1.2.3 | [RFS08] Alterar Cadastro de Serviço Prestados no Calendário | manual | 1d? | 2018-11-20 17:04 | 2018-11-21 17:04 | 106 | 2018-11-20 17:04 | 2018-11-21 17:04 | 1d? |  |  |  | Kevin; Lucas; Rodrigo; Thiago | 2h | 300 | 300 |
| 108 | 1.5.3.1.2.4 | [RFS09] Alterar Cadastro de Serviço no Calendário | manual | 1d? | 2018-11-21 17:04 | 2018-11-22 17:04 | 107 | 2018-11-21 17:04 | 2018-11-22 17:04 | 1d? |  |  |  | Kevin; Lucas; Rodrigo; Thiago | 2h | 300 | 300 |
| 109 | 1.5.3.2 | **Teste Release 03** |  | 2d | 2018-09-13 09:00 | 2018-09-14 18:00 |  | 2018-09-13 09:00 | 2018-09-14 18:00 | 2d |  |  |  |  | 9h | 1,349.75 | 1,349.75 |
| 110 | 1.5.3.2.1 | **[RFC06] Manter Album** |  | 2d | 2018-09-13 09:00 | 2018-09-14 18:00 |  | 2018-09-13 09:00 | 2018-09-14 18:00 | 2d |  |  |  |  | 4h | 599.75 | 599.75 |
| 111 | 1.5.3.2.1.1 | [RFS19] Cadastrar Foto no Album |  | 0.06d? | 2018-11-22 17:04 | 2018-11-23 08:24 | 108 | 2018-11-22 17:04 | 2018-11-23 08:24 | 0.06d? | 3.46d | 0d |  | Rodrigo; Lucas; Kevin; Thiago | 1h | 149.99 | 149.99 |
| 112 | 1.5.3.2.1.2 | [RFS20] Alterar Foto no Album |  | 0.08d? | 2018-11-23 08:24 | 2018-11-23 09:26 | 111 | 2018-11-23 08:24 | 2018-11-23 09:26 | 0.08d? | 3.63d | 0d |  | Kevin; Lucas; Rodrigo; Thiago | 1h | 149.75 | 149.75 |
| 113 | 1.5.3.2.1.3 | [RFS21] Consultar Foto no Album |  | 0.04d? | 2018-11-23 09:26 | 2018-11-23 09:47 | 112 | 2018-11-23 09:26 | 2018-11-23 09:47 | 0.04d? | 3.63d | 0d |  | Lucas; Kevin; Rodrigo; Thiago | 1h | 150 | 150 |
| 114 | 1.5.3.2.1.4 | [RFS22] Remover Foto no Album |  | 0.04d? | 2018-11-23 09:47 | 2018-11-23 10:08 | 113 | 2018-11-23 09:47 | 2018-11-23 10:08 | 0.04d? | 3.63d | 0.39d |  | Lucas; Kevin; Rodrigo; Thiago | 1h | 150 | 150 |
| 115 | 1.5.3.2.2 | **[RFC02] Manter Serviço Prestados no Calendário** |  | 4d | 2018-11-23 14:16 | 2018-11-29 14:16 |  | 2018-11-23 14:16 | 2018-11-29 14:16 | 4d | 0d |  |  |  | 5h | 750 | 750 |
| 116 | 1.5.3.2.2.1 | [RFS06] Cadastrar Serviço Prestados no Calendário | manual | 1d? | 2018-11-23 14:16 | 2018-11-26 14:16 | 114 | 2018-11-23 14:16 | 2018-11-26 14:16 | 1d? |  |  |  | Kevin; Lucas; Rodrigo; Thiago | 2h | 300 | 300 |
| 117 | 1.5.3.2.2.2 | [RFS07] Consultar Serviço Prestados no Calendário | manual | 1d? | 2018-11-26 14:16 | 2018-11-27 14:16 | 116 | 2018-11-26 14:16 | 2018-11-27 14:16 | 1d? |  |  |  | Kevin; Lucas; Rodrigo; Thiago | 1h | 150 | 150 |
| 118 | 1.5.3.2.2.3 | [RFS08] Alterar Cadastro de Serviço Prestados no Calendário | manual | 1d? | 2018-11-27 14:16 | 2018-11-28 14:16 | 117 | 2018-11-27 14:16 | 2018-11-28 14:16 | 1d? |  |  |  | Kevin; Lucas; Rodrigo; Thiago | 1h | 150 | 150 |
| 119 | 1.5.3.2.2.4 | [RFS09] Alterar Cadastro de Serviço no Calendário | manual | 1d? | 2018-11-28 14:16 | 2018-11-29 14:16 | 118 | 2018-11-28 14:16 | 2018-11-29 14:16 | 1d? |  |  |  | Kevin; Lucas; Rodrigo; Thiago | 1h | 150 | 150 |
| 120 | 1.5.3.3 | Gerar Status Report | manual | 1d? | 2018-11-29 14:16 | 2018-11-30 14:16 | 119 | 2018-11-29 14:16 | 2018-11-30 14:16 | 1d? |  |  |  | Kevin; Lucas; Rodrigo; Thiago | 1h | 150 | 150 |
| 121 | 1.5.4 | **Release 04** |  | 68.98d | 2018-09-14 09:00 | 2018-12-19 17:51 |  | 2018-09-14 09:00 | 2018-12-19 17:51 | 68.98d |  |  |  |  | 38.02h | 5,702.81 | 5,702.81 |
| 122 | 1.5.4.1 | **Implementação** |  | 62.31d | 2018-09-14 09:00 | 2018-12-11 11:31 |  | 2018-09-14 09:00 | 2018-12-11 11:31 | 62.31d |  |  |  |  | 29.02h | 4,352.81 | 4,352.81 |
| 123 | 1.5.4.1.1 | **[RFC04] Manter Avaliação de Serviço** |  | 2.44d | 2018-11-30 14:16 | 2018-12-04 17:47 |  | 2018-11-30 14:16 | 2018-12-04 17:47 | 2.44d |  |  |  |  | 16h | 2,400 | 2,400 |
| 124 | 1.5.4.1.1.1 | [RFS14] Cadastrar Avaliação de Serviço |  | 0.75d? | 2018-11-30 14:16 | 2018-12-03 10:16 | 120 | 2018-11-30 14:16 | 2018-12-03 10:16 | 0.75d? | 3.24d | 0d | start no earlier than 2018-09-14 09:00 | Kevin; Lucas; Rodrigo; Thiago | 6h | 900 | 900 |
| 125 | 1.5.4.1.1.2 | [RFS15] Alterar Avaliação de Serviço |  | 0.62d? | 2018-12-03 10:16 | 2018-12-03 17:16 | 124 | 2018-12-03 10:16 | 2018-12-03 17:16 | 0.62d? | 3.12d | 0d | start no earlier than 2018-09-14 09:00 | Kevin; Lucas; Rodrigo; Thiago | 5h | 750 | 750 |
| 126 | 1.5.4.1.1.3 | [RFS18] Remover Avaliação |  | 1.19d | 2018-12-03 17:16 | 2018-12-04 17:47 | 125 | 2018-12-03 17:16 | 2018-12-04 17:47 | 1.19d | 3.12d | 0d |  | Kevin; Lucas; Rodrigo; Thiago | 5h | 750 | 750 |
| 127 | 1.5.4.1.2 | **[RFC05] Manter Avaliação de Cliente** |  | 3d | 2018-12-04 17:47 | 2018-12-07 17:47 |  | 2018-12-04 17:47 | 2018-12-07 17:47 | 3d | 0d |  |  |  | 12h | 1,800 | 1,800 |
| 128 | 1.5.4.1.2.1 | [RFS16] Cadastrar Avaliação de Cliente | manual | 1d? | 2018-12-04 17:47 | 2018-12-05 17:47 | 126 | 2018-12-04 17:47 | 2018-12-05 17:47 | 1d? |  |  |  | Kevin; Lucas; Rodrigo; Thiago | 6h | 900 | 900 |
| 129 | 1.5.4.1.2.2 | [RFS17] Alterar Avaliação de Cliente | manual | 1d? | 2018-12-05 17:47 | 2018-12-06 17:47 | 128 | 2018-12-05 17:47 | 2018-12-06 17:47 | 1d? |  |  |  | Kevin; Lucas; Rodrigo; Thiago | 3h | 450 | 450 |
| 130 | 1.5.4.1.2.3 | [RFS18] Remover Avaliação | manual | 1d? | 2018-12-06 17:47 | 2018-12-07 17:47 | 129 | 2018-12-06 17:47 | 2018-12-07 17:47 | 1d? |  |  |  | Kevin; Lucas; Rodrigo; Thiago | 3h | 450 | 450 |
| 131 | 1.5.4.1.3 | [RFS31] Emitir Relatório de Taxa de Serviços Realizados |  | 1.34d | 2018-12-07 17:47 | 2018-12-11 11:31 | 130 | 2018-12-07 17:47 | 2018-12-11 11:31 | 1.34d | 3.12d | 0d | finish no earlier than 2018-12-10 18:00 | Kevin; Lucas; Rodrigo; Thiago | 1.02h | 152.81 | 152.81 |

| ID | WBS | Task | Type | Duration | Start | Finish | Predecessors | Baseline start | Baseline finish | Baseline duration | Total slack | Free slack | Constraint | Resources | Work | Cost | Baseline cost |
| --- | --- | --- | --- | --- | --- | --- | --- | --- | --- | --- | --- | --- | --- | --- | --- | --- | --- |
| 132 | 1.5.4.2 | **Teste Release 04** |  | 57.75d | 2018-09-28 10:54 | 2018-12-18 17:51 |  | 2018-09-28 10:54 | 2018-12-18 17:51 | 57.75d |  |  |  |  | 8h | 1,200 | 1,200 |
| 133 | 1.5.4.2.1 | **[RFC04] Manter Avaliação de Serviço** |  | 0.13d | 2018-12-10 18:00 | 2018-12-11 10:02 |  | 2018-12-10 18:00 | 2018-12-11 10:02 | 0.13d |  |  |  |  | 3h | 450 | 450 |
| 134 | 1.5.4.2.1.1 | [RFS14] Cadastrar Avaliação de Serviço |  | 0.04d? | 2018-12-11 11:31 | 2018-12-11 11:51 | 131 | 2018-12-11 11:31 | 2018-12-11 11:51 | 0.04d? | 3.24d | 0d |  | Kevin; Lucas; Rodrigo; Thiago | 1h | 150 | 150 |
| 135 | 1.5.4.2.1.2 | [RFS15] Alterar Avaliação de Serviço |  | 0.06d? | 2018-12-11 11:51 | 2018-12-11 14:10 | 134 | 2018-12-11 11:51 | 2018-12-11 14:10 | 0.06d? | 3.12d | 0d |  | Kevin; Lucas; Rodrigo; Thiago | 1h | 150 | 150 |
| 136 | 1.5.4.2.1.3 | [RFS18] Remover Avaliação |  | 0.04d? | 2018-12-11 14:10 | 2018-12-11 14:30 | 135 | 2018-12-11 14:10 | 2018-12-11 14:30 | 0.04d? | 3.12d |  |  | Lucas; Kevin; Rodrigo; Thiago | 1h | 150 | 150 |
| 137 | 1.5.4.2.2 | **[RFC05] Manter Avaliação de Cliente** |  | 2.04d? | 2018-12-14 15:30 | 2018-12-18 15:51 |  | 2018-12-14 15:30 | 2018-12-18 15:51 | 2.04d? | 0d |  |  |  | 3h | 450 | 450 |
| 138 | 1.5.4.2.2.1 | [RFS16] Cadastrar Avaliação de Cliente | manual | 0.04d | 2018-12-14 15:30 | 2018-12-14 15:51 | 136 | 2018-12-14 15:30 | 2018-12-14 15:51 | 0.04d |  |  |  | Lucas; Kevin; Rodrigo; Thiago | 1h | 150 | 150 |
| 139 | 1.5.4.2.2.2 | [RFS17] Alterar Avaliação de Cliente | manual | 1d? | 2018-12-14 15:51 | 2018-12-17 15:51 | 138 | 2018-12-14 15:51 | 2018-12-17 15:51 | 1d? |  |  |  | Kevin; Lucas; Rodrigo; Thiago | 1h | 150 | 150 |
| 140 | 1.5.4.2.2.3 | [RFS18] Remover Avaliação | manual | 1d? | 2018-12-17 15:51 | 2018-12-18 15:51 | 139 | 2018-12-17 15:51 | 2018-12-18 15:51 | 1d? |  |  |  | Kevin; Lucas; Rodrigo; Thiago | 1h | 150 | 150 |
| 141 | 1.5.4.2.3 | [RFS31] Emitir Relatório de Taxa de Serviços Realizados |  | 0.25d? | 2018-12-18 15:51 | 2018-12-18 17:51 | 140 | 2018-12-18 15:51 | 2018-12-18 17:51 | 0.25d? | 0d |  |  | Lucas; Kevin; Rodrigo; Thiago | 2h | 300 | 300 |
| 142 | 1.5.4.3 | Gerar Status Report | manual | 1d? | 2018-12-18 17:51 | 2018-12-19 17:51 | 141 | 2018-12-18 17:51 | 2018-12-19 17:51 | 1d? |  |  |  | Kevin; Lucas; Rodrigo; Thiago | 1h | 150 | 150 |
| 143 | 1.6 | **Monitoramento e Controle** |  | 57.68d | 2018-10-01 09:00 | 2018-12-19 15:25 |  | 2018-10-01 09:00 | 2018-12-19 15:25 | 57.68d |  |  |  |  | 5.57h | 1,671 | 1,671 |
| 144 | 1.6.1 | Acompanhar Projeto |  | 0.7d | 2018-12-18 17:51 | 2018-12-19 15:25 | 141 | 2018-12-18 17:51 | 2018-12-19 15:25 | 0.7d | 1.86d |  | start no earlier than 2018-10-01 09:00 | Adler | 5.57h | 1,671 | 1,671 |
| 145 | 1.7 | **Fechamento** |  | 59.53d | 2018-10-01 09:00 | 2018-12-21 14:16 |  | 2018-10-01 09:00 | 2018-12-21 14:16 | 59.53d |  |  |  |  | 17h | 2,550 | 2,550 |
| 146 | 1.7.1 | Realizar Revisão Total do Sistema |  | 0.68d? | 2018-12-19 17:51 | 2018-12-20 14:16 | 142 | 2018-12-19 17:51 | 2018-12-20 14:16 | 0.68d? | 0d |  | start no earlier than 2018-10-01 09:00 | Kevin; Lucas; Rodrigo; Thiago | 15h | 2,250 | 2,250 |
| 147 | 1.7.2 | Gerar Status Report | manual | 1d? | 2018-12-20 14:16 | 2018-12-21 14:16 | 146 | 2018-12-20 14:16 | 2018-12-21 14:16 | 1d? |  |  |  | Kevin; Lucas; Rodrigo; Thiago | 2h | 300 | 300 |
| 148 | 1.8 | **Controle de Mudanças** |  | 58.99d | 2018-10-01 09:00 | 2018-12-20 17:55 |  | 2018-10-01 09:00 | 2018-12-20 17:55 | 58.99d |  |  |  |  | 8.9h | 1,335 | 1,335 |
| 149 | 1.8.1 | Elaboração Documentação necessária para mudanças |  | 0.25d? | 2018-12-20 14:16 | 2018-12-20 16:16 | 146 | 2018-12-20 14:16 | 2018-12-20 16:16 | 0.25d? | 0.42d | 0d | finish no earlier than 2018-10-04 18:00 | Kevin; Lucas; Rodrigo | 6h | 900 | 900 |
| 150 | 1.8.2 | Revisar Documentação |  | 0.21d? | 2018-12-20 16:16 | 2018-12-20 17:55 | 149 | 2018-12-20 16:16 | 2018-12-20 17:55 | 0.21d? | 0.42d |  | finish no earlier than 2018-10-04 18:00 | Rodrigo; Lucas; Kevin | 2.9h | 435 | 435 |
